# DSE13 Gantt

Schedule from MS Project, 2025-04-22 to 2025-06-27, A marks actual dates.

## Calendars

- Standard: Mon-Fri 08:00-12:00, 13:00-17:00; Sat-Sun off.

## Resources

| Resource |
| --- |
| ALL |
| IPD |
| DvdP |
| TS |
| KS |
| DP |
| JQ |
| MS |
| RV |
| JFM |
| TK |

## Schedule

| ID | WBS | Task | Type | Duration | Start | Finish | Predecessors | Complete | Remaining | Total slack | Free slack | Constraint | Deadline | Resources | Work | Actual work |
| --- | --- | --- | --- | --- | --- | --- | --- | --- | --- | --- | --- | --- | --- | --- | --- | --- |
| 1 | 1 | Project Kickoff | milestone | 0d | 2025-04-22 08:00 A | 2025-04-22 08:00 A |  | 100% |  |  |  |  |  |  |  |  |
| 2 | 1 | **Project Foundation** |  | 6.5d | 2025-04-22 08:00 A | 2025-04-30 12:00 | 1SS | 79% | 1.39d | 41.5d |  |  |  |  | 48.2h | 41.2h |
| 3 | 1.1 | **Familiarization** |  | 0.25d | 2025-04-22 08:00 A | 2025-04-22 10:00 A |  | 100% |  |  |  |  |  |  | 3h | 3h |
| 4 | 1.1.1 | **Read the Project Guide** |  | 0.12d | 2025-04-22 08:00 A | 2025-04-22 09:00 A |  | 100% |  |  |  |  |  | ALL | 1h | 1h |
| 5 | 1.1.1.1 | Define MNS |  | 1h | 2025-04-22 08:00 A | 2025-04-22 09:00 A |  | 100% |  |  |  |  |  |  |  |  |
| 6 | 1.1.1.2 | Define POS |  | 1h | 2025-04-22 08:00 A | 2025-04-22 09:00 A |  | 100% |  |  |  |  |  |  |  |  |
| 7 | 1.1.2 | Discuss Mission with Supervisors |  | 1h | 2025-04-22 09:00 A | 2025-04-22 10:00 A | 4, 8 | 100% |  |  |  |  |  | ALL | 1h | 1h |
| 8 | 1.1.3 | Read Paper on X-zyLo |  | 1h | 2025-04-22 08:00 A | 2025-04-22 09:00 A |  | 100% |  |  |  |  |  | ALL | 1h | 1h |
| 9 | 1.2 | **Define Organizational Structure** |  | 0.5d | 2025-04-22 10:00 A | 2025-04-22 15:00 A | 3 | 100% |  |  |  |  |  |  | 6h | 6h |
| 10 | 1.2.1 | Discuss Expectations |  | 1h | 2025-04-22 10:00 A | 2025-04-22 11:00 A | 3 | 100% |  |  |  |  |  | ALL | 1h | 1h |
| 11 | 1.2.2 | Define Team Rules |  | 1h | 2025-04-22 11:00 A | 2025-04-22 12:00 A | 10 | 100% |  |  |  | start no earlier than 2025-04-22 09:00 |  | DP | 1h | 1h |
| 12 | 1.2.3 | **Construct Organogram** |  | 0.25d | 2025-04-22 13:00 A | 2025-04-22 15:00 A | 11 | 100% |  |  |  |  |  | DP | 4h | 4h |
| 13 | 1.2.3.1 | Define Team Roles |  | 1h | 2025-04-22 13:00 A | 2025-04-22 14:00 A |  | 100% |  |  |  |  |  | DP | 1h | 1h |
| 14 | 1.2.3.2 | Assign Team Roles |  | 1h | 2025-04-22 14:00 A | 2025-04-22 15:00 A | 13 | 100% |  |  |  |  |  | DP | 1h | 1h |
| 15 | 1.3 | **Define the Planning** |  | 2.25d | 2025-04-22 15:00 A | 2025-04-24 17:00 A | 9 | 100% |  |  |  |  |  |  | 25h | 25h |
| 16 | 1.3.1 | Create Overview of the Phases |  | 1h | 2025-04-22 15:00 A | 2025-04-22 16:00 A |  | 100% |  |  |  |  |  | IPD | 1h | 1h |
| 17 | 1.3.2 | Create Workflow Diagram |  | 6h | 2025-04-22 16:00 A | 2025-04-23 14:00 A | 16 | 100% |  |  |  |  |  | DvdP | 6h | 6h |
| 18 | 1.3.3 | Create Work Breakdown Structure |  | 4h | 2025-04-23 14:00 A | 2025-04-24 09:00 A | 17 | 100% |  |  |  |  |  | TS | 4h | 4h |
| 19 | 1.3.4 | **Create Gantt Chart** |  | 0.88d | 2025-04-24 09:00 A | 2025-04-24 17:00 A | 18 | 100% |  |  |  |  |  | KS | 14h | 14h |
| 20 | 1.3.4.1 | Define Work Packages |  | 4h | 2025-04-24 09:00 A | 2025-04-24 14:00 A |  | 100% |  |  |  |  |  | KS | 4h | 4h |
| 21 | 1.3.4.2 | Create Time Frames |  | 2h | 2025-04-24 14:00 A | 2025-04-24 16:00 A | 20 | 100% |  |  |  |  |  | KS | 2h | 2h |
| 22 | 1.3.4.3 | Assign Work Packages |  | 1h | 2025-04-24 16:00 A | 2025-04-24 17:00 A | 21 | 100% |  |  |  |  |  | KS | 1h | 1h |
| 23 | 1.5 | **Project Plan** |  | 3.5d | 2025-04-25 08:00 A | 2025-04-30 12:00 | 15, 29 | 36% | 2.25d | 41.5d |  |  |  |  | 12h | 5h |
| 24 | 1.5.1 | Draft Project Plan |  | 8h | 2025-04-25 08:00 A | 2025-04-25 17:00 |  | 50% | 4h | 0d |  |  | 2025-04-28 17:15 | RV | 8h | 4h |
| 25 | 1.5.2 | Review Project Plan |  | 2h | 2025-04-28 08:00 A | 2025-04-30 09:00 | 24FS+2d | 50% | 1h | 2.5d | 0d |  |  | JFM | 2h | 1h |
| 26 | 1.5.3 | Implement Feedback |  | 1h | 2025-04-30 09:00 | 2025-04-30 10:00 | 25 |  |  | 2.5d | 0d |  |  | TK | 1h |  |
| 27 | 1.5.4 | Create Personal Appendix |  | 1h | 2025-04-25 08:00 | 2025-04-25 09:00 | 24SS |  |  | 44.88d |  |  |  | ALL | 1h |  |
| 28 | 2.4.5 | Make Final Project Plan |  | 2h | 2025-04-30 10:00 | 2025-04-30 12:00 | 26 |  |  | 2.5d |  |  | 2025-05-02 17:15 |  |  |  |

| ID | WBS | Task | Duration | Start | Finish | Predecessors | Complete | Total slack | Free slack | Resources | Work | Actual work |
| --- | --- | --- | --- | --- | --- | --- | --- | --- | --- | --- | --- | --- |
| 29 | 1.4 | **Define Risk and Sustainability** | 0.25d | 2025-04-22 15:00 A | 2025-04-22 17:00 A | 15SS | 100% |  |  |  | 2.2h | 2.2h |
| 30 | 1.4.1 | Perform SWOT Analysis | 0.5h | 2025-04-22 15:00 A | 2025-04-22 15:30 A |  | 100% |  |  | JQ | 0.5h | 0.5h |
| 31 | 1.4.2 | Make Risk Mitigation Plan | 1h | 2025-04-22 15:30 A | 2025-04-22 16:30 A | 30 | 100% |  |  | MS | 1h | 1h |
| 32 | 1.4.3 | **Make a Sustainable Approach Plan** | 0.06d | 2025-04-22 16:30 A | 2025-04-22 17:00 A | 31 | 100% |  |  | JQ | 0.7h | 0.7h |
| 33 | 1.4.3.1 | Create Risk Heat Map on Sustainability | 0.2h | 2025-04-22 16:30 A | 2025-04-22 16:42 A |  | 100% |  |  | JQ | 0.2h | 0.2h |
| 34 | 1.4.3.2 | Define Project Contribution to Sustainability | 0.3h | 2025-04-22 16:42 A | 2025-04-22 17:00 A | 33 | 100% |  |  |  |  |  |
| 35 | 3 | **Preliminary Design & Trade-Off** | 16.69d | 2025-05-07 10:30 | 2025-05-29 17:15 | 212 |  | 11.38d | 0d |  | 684.76h |  |
| 36 | 3.1 | **Refinement for Concept 1** | 4.12d | 2025-05-07 10:30 | 2025-05-13 11:25 |  |  | 15.38d | 0d |  | 132.63h |  |
| 37 | 3.1 | **Size System** | 0.96d | 2025-05-07 10:30 | 2025-05-08 10:12 |  |  | 15.46d | 0d |  | 7.7h |  |
| 38 | 3.1.1 | **Perform Weight Estimation** | 0.25d | 2025-05-07 10:30 | 2025-05-07 13:30 |  |  | 15.46d | 0d |  | 2h |  |
| 39 | 3.1.1.1 | Create Mass Budget | 2h | 2025-05-07 10:30 | 2025-05-07 13:30 |  |  | 15.46d |  | JFM | 2h |  |
| 40 | 3.1.2 | Size Wing and Gyroscope | 1.6h | 2025-05-07 13:30 | 2025-05-07 15:06 | 38 |  | 15.46d | 0d | DvdP | 1.6h |  |
| 41 | 3.1.3 | Create Drag Estimation | 1.6h | 2025-05-07 15:06 | 2025-05-07 16:42 | 40 |  | 15.46d | 0d | TS | 1.6h |  |
| 42 | 3.1.4 | Size Propulsion System | 2.5h | 2025-05-07 16:42 | 2025-05-08 10:12 | 41 |  | 15.46d |  | MS | 2.5h |  |
| 43 | 3.2 | **Perform Preliminary Subsystem Design** | 3.15d | 2025-05-08 10:12 | 2025-05-13 11:25 | 37 |  | 15.38d |  |  | 124.93h |  |
| 44 | 3.2.1 | Make N2 Chart | 0.66h | 2025-05-08 10:12 | 2025-05-08 10:51 |  |  | 15.59d | 0d | DP | 0.66h |  |
| 45 | 3.2.2 | **Perform Aerodynamic Design** | 2.08d | 2025-05-08 10:51 | 2025-05-12 11:31 | 44 |  | 15.59d | 0d | TK | 33.32h |  |
| 46 | 3.2.2.1 | Generate Structure Mesh | 4.44h | 2025-05-08 10:51 | 2025-05-08 16:18 |  |  | 15.59d | 0d | DP | 4.44h |  |
| 47 | 3.2.2.2 | Perform CFD Analysis | 11.11h | 2025-05-08 16:18 | 2025-05-12 10:24 | 46 |  | 15.59d | 0d | TS | 11.11h |  |
| 48 | 3.2.2.3 | Export Lift, Drag, Moment | 1.11h | 2025-05-12 10:24 | 2025-05-12 11:31 | 47 |  | 15.59d |  | DP | 1.11h |  |
| 49 | 3.2.3 | **Perform Control & Stability Design** | 2.29d | 2025-05-08 10:51 | 2025-05-12 14:10 | 45SS |  | 15.38d | 0d | IPD | 36.64h |  |
| 50 | 3.2.3.1 | Run Dynamic Simulation | 2.78h | 2025-05-08 10:51 | 2025-05-08 14:38 |  |  | 15.38d | 0d | DvdP | 2.78h |  |
| 51 | 3.2.3.2 | Size Actuators | 11.11h | 2025-05-08 14:38 | 2025-05-12 08:45 | 50 |  | 15.38d | 0d | IPD | 11.11h |  |
| 52 | 3.2.3.3 | Size Electronics & Sensors | 4.43h | 2025-05-12 08:45 | 2025-05-12 14:10 | 51 |  | 15.38d |  | JQ | 4.43h |  |

| ID | WBS | Task | Duration | Start | Finish | Predecessors | Total slack | Free slack | Resources | Work |
| --- | --- | --- | --- | --- | --- | --- | --- | --- | --- | --- |
| 53 | 3.2.4 | **Perform Power & Propulsion Design** | 2.26d | 2025-05-08 10:51 | 2025-05-12 13:55 | 45SS | 15.41d | 0.03d | JQ | 26.4h |
| 54 | 3.2.4.1 | Size Propulsion | 4.17h | 2025-05-08 10:51 | 2025-05-08 16:01 |  | 17.15d |  | MS | 4.17h |
| 55 | 3.2.4.3 | Size Battery | 4.17h | 2025-05-12 08:45 | 2025-05-12 13:55 | 51 | 15.41d |  | JQ | 4.17h |
| 56 | 3.2.5 | **Perform Structures & Materials Design** | 1.35d | 2025-05-08 10:51 | 2025-05-09 14:41 | 45SS | 16.32d | 0.94d | KS | 21.66h |
| 57 | 3.2.5.1 | Design Structure | 8.33h | 2025-05-08 10:51 | 2025-05-09 11:11 |  | 16.32d | 0d | KS | 8.33h |
| 58 | 3.2.5.2 | Select Material | 2.5h | 2025-05-09 11:11 | 2025-05-09 14:41 | 57 | 16.32d |  | KS | 2.5h |
| 59 | 3.2.6 | Evaluate Requirement Compliance | 6.25h | 2025-05-12 14:10 | 2025-05-13 11:25 | 49, 56, 53, 45 | 15.38d |  | KS | 6.25h |
| 60 | 3.1 | **Refinement for Concept 2** | 4.12d | 2025-05-13 11:25 | 2025-05-19 13:21 | 36 | 15.3d | 0d |  | 126.38h |
| 61 | 3.1 | **Size System** | 0.96d | 2025-05-13 11:25 | 2025-05-14 11:07 |  | 15.38d | 0d |  | 7.7h |
| 62 | 3.1.1 | **Perform Weight Estimation** | 0.25d | 2025-05-13 11:25 | 2025-05-13 14:25 |  | 15.38d | 0d |  | 2h |
| 63 | 3.1.1.1 | Create Mass Budget | 2h | 2025-05-13 11:25 | 2025-05-13 14:25 |  | 15.38d |  | JFM | 2h |
| 64 | 3.1.2 | Size Wing and Gyroscope | 1.6h | 2025-05-13 14:25 | 2025-05-13 16:01 | 62 | 15.38d | 0d | DvdP | 1.6h |
| 65 | 3.1.3 | Create Drag Estimation | 1.6h | 2025-05-13 16:01 | 2025-05-14 08:37 | 64 | 15.38d | 0d | TS | 1.6h |
| 66 | 3.1.4 | Size Propulsion System | 2.5h | 2025-05-14 08:37 | 2025-05-14 11:07 | 65 | 15.38d |  | MS | 2.5h |
| 67 | 3.2 | **Perform Preliminary Subsystem Design** | 3.15d | 2025-05-14 11:07 | 2025-05-19 13:21 | 61 | 15.3d |  |  | 118.68h |
| 68 | 3.2.1 | Make N2 Chart | 0.66h | 2025-05-14 11:07 | 2025-05-14 11:47 |  | 15.5d | 0d | DP | 0.66h |
| 69 | 3.2.2 | **Perform Aerodynamic Design** | 2.08d | 2025-05-14 11:47 | 2025-05-16 13:27 | 68 | 15.5d | 0d | TK | 33.32h |
| 70 | 3.2.2.1 | Generate Structure Mesh | 4.44h | 2025-05-14 11:47 | 2025-05-15 08:13 |  | 15.5d | 0d | DP | 4.44h |
| 71 | 3.2.2.2 | Perform CFD Analysis | 11.11h | 2025-05-15 08:13 | 2025-05-16 11:20 | 70 | 15.5d | 0d | TS | 11.11h |
| 72 | 3.2.2.3 | Export Lift, Drag, Moment | 1.11h | 2025-05-16 11:20 | 2025-05-16 13:27 | 71 | 15.5d |  | DP | 1.11h |
| 73 | 3.2.3 | **Perform Control & Stability Design** | 2.29d | 2025-05-14 11:47 | 2025-05-16 15:06 | 69SS | 15.3d | 0d | IPD | 36.64h |
| 74 | 3.2.3.1 | Run Dynamic Simulation | 2.78h | 2025-05-14 11:47 | 2025-05-14 15:34 |  | 15.3d | 0d | DvdP | 2.78h |
| 75 | 3.2.3.2 | Size Actuators | 11.11h | 2025-05-14 15:34 | 2025-05-16 09:40 | 74 | 15.3d | 0d | IPD | 11.11h |
| 76 | 3.2.3.3 | Size Electronics & Sensors | 4.43h | 2025-05-16 09:40 | 2025-05-16 15:06 | 75 | 15.3d |  | JQ | 4.43h |

| ID | WBS | Task | Duration | Start | Finish | Predecessors | Total slack | Free slack | Resources | Work |
| --- | --- | --- | --- | --- | --- | --- | --- | --- | --- | --- |
| 77 | 3.2.4 | **Perform Power & Propulsion Design** | 2.26d | 2025-05-14 11:47 | 2025-05-16 14:51 | 69SS | 15.33d | 0.03d | JQ | 26.4h |
| 78 | 3.2.4.1 | Size Propulsion | 4.17h | 2025-05-14 11:47 | 2025-05-14 16:57 |  | 17.07d |  | MS | 4.17h |
| 79 | 3.2.4.3 | Size Battery | 4.17h | 2025-05-16 09:40 | 2025-05-16 14:51 | 75 | 15.33d |  | JQ | 4.17h |
| 80 | 3.2.5 | **Perform Structures & Materials Design** | 1.35d | 2025-05-14 11:47 | 2025-05-15 15:37 | 69SS | 16.23d | 0.94d | KS | 21.66h |
| 81 | 3.2.5.1 | Design Structure | 8.33h | 2025-05-14 11:47 | 2025-05-15 13:07 |  | 16.23d | 0d | KS | 8.33h |
| 82 | 3.2.5.2 | Select Material | 2.5h | 2025-05-15 13:07 | 2025-05-15 15:37 | 81 | 16.23d |  | KS | 2.5h |
| 83 | 3.2.6 | Evaluate Requirement Compliance | 6.25h | 2025-05-16 15:06 | 2025-05-19 13:21 | 80, 77, 73, 69 | 15.3d |  |  |  |
| 84 | 3.1 | **Refinement for Concept 3** | 4.12d | 2025-05-19 13:21 | 2025-05-23 14:17 | 60 | 15.21d | 0d |  | 126.38h |
| 85 | 3.1 | **Size System** | 0.96d | 2025-05-19 13:21 | 2025-05-20 13:03 |  | 15.3d | 0d |  | 7.7h |
| 86 | 3.1.1 | **Perform Weight Estimation** | 0.25d | 2025-05-19 13:21 | 2025-05-19 15:21 |  | 15.3d | 0d |  | 2h |
| 87 | 3.1.1.1 | Create Mass Budget | 2h | 2025-05-19 13:21 | 2025-05-19 15:21 |  | 15.3d |  | JFM | 2h |
| 88 | 3.1.2 | Size Wing and Gyroscope | 1.6h | 2025-05-19 15:21 | 2025-05-19 16:57 | 86 | 15.3d | 0d | DvdP | 1.6h |
| 89 | 3.1.3 | Create Drag Estimation | 1.6h | 2025-05-19 16:57 | 2025-05-20 09:33 | 88 | 15.3d | 0d | TS | 1.6h |
| 90 | 3.1.4 | Size Propulsion System | 2.5h | 2025-05-20 09:33 | 2025-05-20 13:03 | 89 | 15.3d |  | MS | 2.5h |
| 91 | 3.2 | **Perform Preliminary Subsystem Design** | 3.15d | 2025-05-20 13:03 | 2025-05-23 14:17 | 85 | 15.21d |  |  | 118.68h |
| 92 | 3.2.1 | Make N2 Chart | 0.66h | 2025-05-20 13:03 | 2025-05-20 13:43 |  | 15.42d | 0d | DP | 0.66h |
| 93 | 3.2.2 | **Perform Aerodynamic Design** | 2.08d | 2025-05-20 13:43 | 2025-05-22 14:22 | 92 | 15.42d | 0d | TK | 33.32h |
| 94 | 3.2.2.1 | Generate Structure Mesh | 4.44h | 2025-05-20 13:43 | 2025-05-21 09:09 |  | 15.42d | 0d | DP | 4.44h |
| 95 | 3.2.2.2 | Perform CFD Analysis | 11.11h | 2025-05-21 09:09 | 2025-05-22 13:16 | 94 | 15.42d | 0d | TS | 11.11h |
| 96 | 3.2.2.3 | Export Lift, Drag, Moment | 1.11h | 2025-05-22 13:16 | 2025-05-22 14:22 | 95 | 15.42d |  | DP | 1.11h |
| 97 | 3.2.3 | **Perform Control & Stability Design** | 2.29d | 2025-05-20 13:43 | 2025-05-22 16:02 | 93SS | 15.21d | 0d | IPD | 36.64h |
| 98 | 3.2.3.1 | Run Dynamic Simulation | 2.78h | 2025-05-20 13:43 | 2025-05-20 16:30 |  | 15.21d | 0d | DvdP | 2.78h |
| 99 | 3.2.3.2 | Size Actuators | 11.11h | 2025-05-20 16:30 | 2025-05-22 10:36 | 98 | 15.21d | 0d | IPD | 11.11h |
| 100 | 3.2.3.3 | Size Electronics & Sensors | 4.43h | 2025-05-22 10:36 | 2025-05-22 16:02 | 99 | 15.21d |  | JQ | 4.43h |

| ID | WBS | Task | Type | Duration | Start | Finish | Predecessors | Total slack | Free slack | Constraint | Deadline | Resources | Work |
| --- | --- | --- | --- | --- | --- | --- | --- | --- | --- | --- | --- | --- | --- |
| 101 | 3.2.4 | **Perform Power & Propulsion Design** |  | 2.26d | 2025-05-20 13:43 | 2025-05-22 15:46 | 93SS | 15.25d | 0.03d |  |  | JQ | 26.4h |
| 102 | 3.2.4.1 | Size Propulsion |  | 4.17h | 2025-05-20 13:43 | 2025-05-21 08:53 |  | 16.98d |  |  |  | MS | 4.17h |
| 103 | 3.2.4.3 | Size Battery |  | 4.17h | 2025-05-22 10:36 | 2025-05-22 15:46 | 99 | 15.25d |  |  |  | JQ | 4.17h |
| 104 | 3.2.5 | **Perform Structures & Materials Design** |  | 1.35d | 2025-05-20 13:43 | 2025-05-21 16:33 | 93SS | 16.15d | 0.94d |  |  | KS | 21.66h |
| 105 | 3.2.5.1 | Design Structure |  | 8.33h | 2025-05-20 13:43 | 2025-05-21 14:03 |  | 16.15d | 0d |  |  | KS | 8.33h |
| 106 | 3.2.5.2 | Select Material |  | 2.5h | 2025-05-21 14:03 | 2025-05-21 16:33 | 105 | 16.15d |  |  |  | KS | 2.5h |
| 107 | 3.2.6 | Evaluate Requirement Compliance |  | 6.25h | 2025-05-22 16:02 | 2025-05-23 14:17 | 104, 101, 97, 93 | 15.21d |  |  |  |  |  |
| 108 | 3.4 | **Extend Simulation** |  | 12.5d | 2025-05-07 10:30 | 2025-05-23 15:30 | 36SS | 15.56d |  |  |  | TS | 200h |
| 109 | 3.4.1 | Implement Propulsion & Actuators |  | 50h | 2025-05-07 10:30 | 2025-05-15 13:30 |  | 15.56d | 0d |  |  | MS | 50h |
| 110 | 3.4.2 | Implement Control Capability |  | 50h | 2025-05-15 13:30 | 2025-05-23 15:30 | 109 | 15.56d |  |  |  | JFM | 50h |
| 111 | 3.3 | **Trade-Off** |  | 0.5d | 2025-05-23 14:17 | 2025-05-26 09:17 | 84 | 15.21d |  |  |  |  | 24h |
| 112 | 3.3.1 | **Perform Trade-Off** |  | 0.5d | 2025-05-23 14:17 | 2025-05-26 09:17 |  | 15.21d | 0d |  |  | JQ | 12h |
| 113 | 3.3.1.1 | Determine Selection Criteria & Weights |  | 4h | 2025-05-23 14:17 | 2025-05-26 09:17 |  | 15.21d | 0d |  |  | JFM | 4h |
| 114 | 3.3.1.2 | Graphical Trade-Off Tables |  | 4h | 2025-05-23 14:17 | 2025-05-26 09:17 | 113SS | 15.21d |  |  |  | IPD | 4h |
| 115 | 3.3.2 | **Extend Risk Analysis** |  | 0.5d | 2025-05-23 14:17 | 2025-05-26 09:17 | 112SS | 15.21d | 0d |  |  | DvdP | 12h |
| 116 | 3.3.2.1 | Update Risk Map |  | 4h | 2025-05-23 14:17 | 2025-05-26 09:17 |  | 15.21d | 0d |  |  | MS | 4h |
| 117 | 3.3.2.2 | Assess Concept Risk |  | 4h | 2025-05-23 14:17 | 2025-05-26 09:17 | 116SS | 15.21d |  |  |  | JQ | 4h |
| 118 | 3.3.3 | **Draft Midterm Report** |  | 4.34d | 2025-05-23 14:17 | 2025-05-29 17:15 | 112SS, 115SS | 3.51d |  |  |  | RV | 75.37h |
| 119 | 3.3.3.0 | Write Midterm Report |  | 8h | 2025-05-23 14:17 | 2025-05-26 14:17 |  | 14.59d | 0d |  |  | RV | 8h |
| 120 | 3.3.3.1 | Proofread Midterm Report |  | 1h | 2025-05-26 14:17 | 2025-05-26 15:17 | 119 | 14.59d |  |  |  | RV | 1h |
| 121 | 3.3.3.2 | Implement Feedback |  | 1h | 2025-05-27 08:00 | 2025-05-27 09:00 | 126 | 14.25d |  |  |  | TK | 1h |
| 122 | 3.3.4 | **Organize Midterm Review** |  | 3d | 2025-05-27 08:00 | 2025-05-29 17:15 |  | 0d |  |  |  | TK | 30.66h |
| 123 | 3.3.4.1 | Create Presentation |  | 3.33h | 2025-05-27 08:00 | 2025-05-27 11:19 | 126 | 2.17d | 0d |  |  | DP | 3.33h |
| 124 | 3.3.4.2 | Practice Presentation |  | 3.33h | 2025-05-27 11:19 | 2025-05-27 15:39 | 123 | 2.17d |  |  |  | ALL | 3.33h |
| 125 | 3.3.4.3 | Midterm Review | milestone | 0h | 2025-05-29 17:15 | 2025-05-29 17:15 | 124 | 0d |  | finish no earlier than 2025-05-29 17:15 | 2025-05-29 17:15 | ALL |  |
| 126 | 0 | Midterm Report | milestone | 0h | 2025-05-26 17:15 | 2025-05-26 17:15 |  | 0d |  | finish no earlier than 2025-05-26 17:15 | 2025-05-26 17:15 | ALL |  |

| ID | WBS | Task | Duration | Start | Finish | Predecessors | Total slack | Free slack |
| --- | --- | --- | --- | --- | --- | --- | --- | --- |
| 127 | 4 | **Detailed Design** | 7d | 2025-05-30 08:00 | 2025-06-09 17:00 | 35 | 11.38d | 0d |
| 128 | 4.1 | **Perform Detailed Design** | 1.38d | 2025-05-30 14:00 | 2025-06-02 17:00 | 169 | 11.38d | 0d |
| 129 | 4.1.1 | **Perform Aerodynamic Subsystem Design** | 1d | 2025-05-30 14:00 | 2025-06-02 14:00 |  | 11.75d | 0d |
| 130 | 4.1.1.1 | Select Airfoil | 0.5h | 2025-05-30 14:00 | 2025-05-30 14:30 |  | 11.75d | 0d |
| 131 | 4.1.1.2 | Design Empennage | 1h | 2025-05-30 14:30 | 2025-05-30 15:30 | 130 | 11.75d | 0d |
| 132 | 4.1.1.3 | Optimize Aerodynamics | 2h | 2025-05-30 15:30 | 2025-06-02 08:30 | 131 | 11.75d | 0d |
| 133 | 4.1.1.4 | Perform CFD Analysis | 4h | 2025-06-02 08:30 | 2025-06-02 13:30 | 132 | 11.75d | 0d |
| 134 | 4.1.1.5 | Revise Final Drag Budget | 0.5h | 2025-06-02 13:30 | 2025-06-02 14:00 | 133 | 11.75d |  |
| 135 | 4.1.2 | **Perform Detailed EPS Architecture Design** | 0.38d | 2025-05-30 14:00 | 2025-05-30 17:00 | 129SS | 12.38d |  |
| 136 | 4.1.2.1 | Revise Final Power Budget | 0.5h | 2025-05-30 14:00 | 2025-05-30 14:30 |  | 12.38d | 0d |
| 137 | 4.1.2.2 | Select and Size Battery | 0.25h | 2025-05-30 14:30 | 2025-05-30 14:45 | 136 | 12.38d | 0d |
| 138 | 4.1.2.3 | Select and Size PDU | 0.25h | 2025-05-30 14:45 | 2025-05-30 15:00 | 137 | 12.38d | 0d |
| 139 | 4.1.2.4 | Design Electrical Architecture | 2h | 2025-05-30 15:00 | 2025-05-30 17:00 | 138 | 12.38d |  |
| 140 | 4.1.3 | **Perform Detailed Propulsion Design** | 0.5d | 2025-05-30 14:00 | 2025-06-02 09:00 | 129SS | 12.25d |  |
| 141 | 4.1.3.1 | Size and Place Propulsion System | 1h | 2025-05-30 14:00 | 2025-05-30 15:00 |  | 12.25d | 0d |
| 142 | 4.1.3.2 | Select Propeller and Motor | 1h | 2025-05-30 15:00 | 2025-05-30 16:00 | 141 | 12.25d | 0d |
| 143 | 4.1.3.3 | Model Propulsion System | 2h | 2025-05-30 16:00 | 2025-06-02 09:00 | 142 | 12.25d |  |
| 144 | 4.1.4 | **Design Control Subsystem** | 1.38d | 2025-05-30 14:00 | 2025-06-02 17:00 | 129SS | 11.38d |  |
| 145 | 4.1.4.1 | Size and Place Actuator | 1h | 2025-05-30 14:00 | 2025-05-30 15:00 |  | 11.38d | 0d |
| 146 | 4.1.4.2 | Size and Design Gyroscope | 1h | 2025-05-30 15:00 | 2025-05-30 16:00 | 145 | 11.38d | 0d |
| 147 | 4.1.4.3 | Select Actuator | 1h | 2025-05-30 16:00 | 2025-05-30 17:00 | 146 | 11.38d | 0d |
| 148 | 4.1.4.4 | Design Control Loop | 3h | 2025-06-02 08:00 | 2025-06-02 11:00 | 147 | 11.38d | 0d |
| 149 | 4.1.4.5 | Model Control System | 5h | 2025-06-02 11:00 | 2025-06-02 17:00 | 148 | 11.38d |  |
| 150 | 4.1.5 | **Design Comms Subsystem** | 0.38d | 2025-05-30 14:00 | 2025-05-30 17:00 | 129SS | 12.38d |  |
| 151 | 4.1.5.1 | Select Frequency Band | 1h | 2025-05-30 14:00 | 2025-05-30 15:00 |  | 12.38d | 0d |
| 152 | 4.1.5.2 | Create Link Budget | 1h | 2025-05-30 15:00 | 2025-05-30 16:00 | 151 | 12.38d | 0d |
| 153 | 4.1.5.3 | Size and Select Antenna | 1h | 2025-05-30 16:00 | 2025-05-30 17:00 | 152 | 12.38d |  |

| ID | WBS | Task | Duration | Start | Finish | Predecessors | Total slack | Free slack |
| --- | --- | --- | --- | --- | --- | --- | --- | --- |
| 154 | 4.1.6 | **Design Operational Architecture** | 0.5d | 2025-05-30 14:00 | 2025-06-02 09:00 | 129SS | 12.25d |  |
| 155 | 4.1.6.1 | Select Swarming Strategy | 1h | 2025-05-30 14:00 | 2025-05-30 15:00 |  | 12.25d | 0d |
| 156 | 4.1.6.2 | Model Swaming Behaviour | 2h | 2025-05-30 15:00 | 2025-05-30 17:00 | 155 | 12.25d | 0d |
| 157 | 4.1.6.3 | Model Environment | 1h | 2025-06-02 08:00 | 2025-06-02 09:00 | 156 | 12.25d |  |
| 158 | 4.1.7 | **Design Sensor** | 0.38d | 2025-05-30 14:00 | 2025-05-30 17:00 | 129SS | 12.38d |  |
| 159 | 4.1.7.1 | Select and Place Sensor | 1h | 2025-05-30 14:00 | 2025-05-30 15:00 |  | 12.38d | 0d |
| 160 | 4.1.7.2 | Model Sensor Data | 2h | 2025-05-30 15:00 | 2025-05-30 17:00 | 159 | 12.38d |  |
| 161 | 4.1.8 | **Design Structural Components** | 0.38d | 2025-05-30 14:00 | 2025-05-30 17:00 | 129SS | 12.38d |  |
| 162 | 4.1.8.1 | Create Structural Model | 0.5h | 2025-05-30 14:00 | 2025-05-30 14:30 |  | 12.38d | 0d |
| 163 | 4.1.8.2 | Perform FEM Analysis | 1.25h | 2025-05-30 14:30 | 2025-05-30 15:45 | 162 | 12.38d | 0d |
| 164 | 4.1.8.3 | Perform Dynamic Analysis | 1.25h | 2025-05-30 15:45 | 2025-05-30 17:00 | 163 | 12.38d |  |
| 165 | 4.1.9 | **Design Deployment Subsystem** | 0.25d | 2025-05-30 14:00 | 2025-05-30 16:00 | 129SS | 12.5d |  |
| 166 | 4.1.9.1 | Design Deployment System | 1h | 2025-05-30 14:00 | 2025-05-30 15:00 |  | 12.5d | 0d |
| 167 | 4.1.9.2 | Model Deployment System | 1h | 2025-05-30 15:00 | 2025-05-30 16:00 | 166 | 12.5d |  |
| 168 | 4.2 | **Verify & Validate** | 7d | 2025-05-30 08:00 | 2025-06-09 17:00 |  | 11.38d |  |
| 169 | 4.2.1 | **Perform Requirements Review** | 0.62d | 2025-05-30 08:00 | 2025-05-30 14:00 |  | 11.38d | 0d |
| 170 | 4.2.1.1 | Review Requirements | 1h | 2025-05-30 08:00 | 2025-05-30 09:00 |  | 11.38d | 0d |
| 171 | 4.2.1.2 | Analyse Killer Requirements | 2h | 2025-05-30 09:00 | 2025-05-30 11:00 | 170 | 11.38d | 0d |
| 172 | 4.2.1.3 | Mitigate or Change Requirements | 2h | 2025-05-30 11:00 | 2025-05-30 14:00 | 171 | 11.38d |  |
| 173 | 4.2.2 | **Evaluate Requirement Compliance** | 1.25d | 2025-06-06 15:00 | 2025-06-09 17:00 | 191 | 11.38d |  |
| 174 | 4.2.2.1 | Verify Requirements Compliance Through Inspection | 2h | 2025-06-06 15:00 | 2025-06-06 17:00 |  | 11.38d | 0d |
| 175 | 4.2.2.2 | Verify Requirements Compliance Through Analysis | 3h | 2025-06-09 08:00 | 2025-06-09 11:00 | 174 | 11.38d | 0d |
| 176 | 4.2.2.3 | Verify Requirements Compliance Through System Modelling | 5h | 2025-06-09 11:00 | 2025-06-09 17:00 | 175 | 11.38d |  |
| 177 | 4.2.3 | **Validate Model** | 0.62d | 2025-06-04 15:00 | 2025-06-05 11:00 | 195 | 14d |  |
| 178 | 4.2.3.1 | Generate Test Cases | 2h | 2025-06-04 15:00 | 2025-06-04 17:00 |  | 14d | 0d |
| 179 | 4.2.3.2 | Analyse Test Case Results | 1h | 2025-06-05 08:00 | 2025-06-05 09:00 | 178 | 14d | 0d |
| 180 | 4.2.3.3 | Investigate Model Through Inspection | 2h | 2025-06-05 09:00 | 2025-06-05 11:00 | 179 | 14d |  |

| ID | WBS | Task | Duration | Start | Finish | Predecessors | Total slack | Free slack |
| --- | --- | --- | --- | --- | --- | --- | --- | --- |
| 181 | 4.3 | **Integrate System** | 1.88d | 2025-06-03 08:00 | 2025-06-04 16:00 | 128 | 11.38d | 0d |
| 182 | 4.3.1 | **Perform Subsystem Assembly Design** | 1d | 2025-06-03 08:00 | 2025-06-03 17:00 |  | 11.38d | 0d |
| 183 | 4.3.1.1 | Design System Configuration | 5h | 2025-06-03 08:00 | 2025-06-03 14:00 |  | 11.38d | 0d |
| 184 | 4.3.1.2 | Design System Assembly Process | 3h | 2025-06-03 14:00 | 2025-06-03 17:00 | 183 | 11.38d |  |
| 185 | 4.3.2 | **Integrate Subsystems** | 0.88d | 2025-06-04 08:00 | 2025-06-04 16:00 | 182 | 11.38d |  |
| 186 | 4.3.2.1 | Design Aerodynamic Integration | 2h | 2025-06-04 08:00 | 2025-06-04 10:00 |  | 11.38d | 0d |
| 187 | 4.3.2.2 | Design EPS Integration | 1h | 2025-06-04 10:00 | 2025-06-04 11:00 | 186 | 11.38d | 0d |
| 188 | 4.3.2.3 | Design Structural Integration | 1h | 2025-06-04 11:00 | 2025-06-04 12:00 | 187 | 11.38d | 0d |
| 189 | 4.3.2.4 | Design Propulsion & Control Integration | 3h | 2025-06-04 13:00 | 2025-06-04 16:00 | 188 | 11.38d |  |
| 190 | 4.4 | **Simulate System** | 5.75d | 2025-05-30 08:00 | 2025-06-06 15:00 |  | 12d |  |
| 191 | 4.4.1 | **Simulate and Analyse** | 1.88d | 2025-06-04 16:00 | 2025-06-06 15:00 | 181 | 11.38d | 0d |
| 192 | 4.4.1.1 | Analyse Swarm Performance | 4h | 2025-06-04 16:00 | 2025-06-05 11:00 |  | 11.38d | 0d |
| 193 | 4.4.1.2 | Analyse Flight Performance | 7h | 2025-06-05 11:00 | 2025-06-06 10:00 | 192 | 11.38d | 0d |
| 194 | 4.4.1.3 | Analyse Sensor Performance | 4h | 2025-06-06 10:00 | 2025-06-06 15:00 | 193 | 11.38d |  |
| 195 | 4.4.2 | **Extend Simulation** | 3.75d | 2025-05-30 08:00 | 2025-06-04 15:00 |  | 14d | 0d |
| 196 | 4.4.2.1 | Model Iteration | 10h | 2025-05-30 08:00 | 2025-06-02 10:00 |  | 14d | 0d |
| 197 | 4.4.2.2 | Extend Simulation with Swarming | 10h | 2025-06-02 10:00 | 2025-06-03 12:00 | 196 | 14d | 0d |
| 198 | 4.4.2.3 | Integration of Submodels | 10h | 2025-06-03 13:00 | 2025-06-04 15:00 | 197 | 14d |  |
| 199 | 5 | **Final Phase** | 9.56d | 2025-06-10 08:00 | 2025-06-23 13:30 | 127 | 3.44d |  |
| 200 | 5.1 | **Final Report** | 9.56d | 2025-06-10 08:00 | 2025-06-23 13:30 |  | 3.44d |  |
| 201 | 5.1.1 | **Draft Final Report** | 9.56d | 2025-06-10 08:00 | 2025-06-23 13:30 |  | 3.44d | 0d |
| 202 | 5.1.1.1 | Proofread Final Report | 4h | 2025-06-10 08:00 | 2025-06-10 12:00 |  | 12.5d |  |
| 203 | 5.1.1.2 | Implement Feedback | 4h | 2025-06-23 08:30 | 2025-06-23 13:30 | 290 | 3.44d |  |
| 204 | 5.1.2 | Draft Jury Summary | 8h | 2025-06-10 08:00 | 2025-06-10 17:00 | 201SS | 12d |  |

| ID | WBS | Task | Duration | Start | Finish | Predecessors | Complete | Remaining | Total slack | Free slack | Resources | Work | Actual work |
| --- | --- | --- | --- | --- | --- | --- | --- | --- | --- | --- | --- | --- | --- |
| 205 | 5.1.3 | **Prepare Final Review** | 1d | 2025-06-10 08:00 | 2025-06-10 17:00 |  |  |  | 12d | 0d |  |  |  |
| 206 | 5.1.3.1 | Create Presentation | 5h | 2025-06-10 08:00 | 2025-06-10 14:00 |  |  |  | 12d | 0d |  |  |  |
| 207 | 5.1.3.2 | Practice Presentation | 3h | 2025-06-10 14:00 | 2025-06-10 17:00 | 206 |  |  | 12d |  |  |  |  |
| 208 | 5.2 | **Symposium** | 1.62d | 2025-06-10 08:00 | 2025-06-11 14:00 |  |  |  | 11.38d |  |  |  |  |
| 209 | 5.2.1 | Create Poster | 13h | 2025-06-10 08:00 | 2025-06-11 14:00 | 205SS |  |  | 11.38d |  |  |  |  |
| 210 | 5.2.2 | Draft Red Booklet Summary | 8h | 2025-06-10 08:00 | 2025-06-10 17:00 | 205SS |  |  | 12d |  |  |  |  |
| 211 | 5.2.3 | Prepare Symposium Presentation | 8h | 2025-06-10 08:00 | 2025-06-10 17:00 | 205SS |  |  | 12d |  |  |  |  |
| 212 | 2 | **Concept Phase** | 7.31d | 2025-04-28 08:00 A | 2025-05-07 10:30 | 24 | 15% | 6.24d | 13.69d | 0d |  | 311.69h | 33.12h |
| 213 | 2.1 | **Product and Project Scoping** | 0.36d | 2025-04-28 08:00 A | 2025-04-28 10:54 |  | 50% | 0.18d | 20.64d | 0d |  | 11.8h | 6.65h |
| 214 | 2.1.1 | Establish Project Objectives | 0.5h | 2025-04-28 08:00 A | 2025-04-28 08:30 A |  | 100% |  |  |  | DP | 0.5h | 0.5h |
| 215 | 2.1.2 | **Perform Market Analysis** | 0.19d | 2025-04-28 08:30 A | 2025-04-28 10:00 A | 214 | 100% |  |  |  | TS | 3h | 3h |
| 216 | 2.1.2.1 | Analyze Existing Solutions & Market Needs | 1h | 2025-04-28 08:30 A | 2025-04-28 09:30 A | 214 | 100% |  |  |  | TS | 1h | 1h |
| 217 | 2.1.2.2 | Perform SWOT of Prouduct on Market | 0.5h | 2025-04-28 09:30 A | 2025-04-28 10:00 A | 216 | 100% |  |  |  | TS | 0.5h | 0.5h |
| 218 | 2.1.3 | Resource Allocation & Budget Breakdown | 1.5h | 2025-04-28 08:30 A | 2025-04-28 10:00 | 215SS | 50% | 0.75h | 20.75d |  | TS | 1.5h | 0.75h |
| 219 | 2.1.4 | **Develop Risk Assessment** | 0.3d | 2025-04-28 08:30 A | 2025-04-28 10:54 | 215SS | 50% | 0.15d | 20.64d |  | JQ | 4.8h | 2.4h |
| 220 | 2.1.4.1 | Technical Risk Assessment | 1.2h | 2025-04-28 08:30 A | 2025-04-28 09:42 |  | 50% | 0.6h | 0.07d | 0d | JQ | 1.2h | 0.6h |
| 221 | 2.1.4.2 | Contingency Management | 1.2h | 2025-04-28 09:42 A | 2025-04-28 10:54 | 220 | 50% | 0.6h | 20.64d |  | JQ | 1.2h | 0.6h |
| 222 | 2.1.5 | Develop Sustainable Development Approach | 2h | 2025-04-28 08:30 | 2025-04-28 10:30 | 215SS |  |  | 20.69d |  | MS | 2h |  |
| 223 | 2.2 | **Literature Study** | 0.38d | 2025-04-28 08:00 A | 2025-04-28 11:00 | 213SS | 15% | 0.32d | 0d |  |  | 10h | 1.25h |
| 224 | 2.2.1 | **Conduct Research on Relevant Topics** | 0.12d | 2025-04-28 08:00 A | 2025-04-28 09:00 |  | 25% | 0.09d | 0.25d |  | JFM | 5h | 1.25h |
| 225 | 2.2.1.1 | Research Aerodynamic Phenomena | 1h | 2025-04-28 08:00 A | 2025-04-28 09:00 |  | 25% | 0.75h | 0.25d | 0d | JFM | 1h | 0.25h |
| 226 | 2.2.1.2 | Research Stability & Control Characteristics | 1h | 2025-04-28 08:00 A | 2025-04-28 09:00 | 225SS | 25% | 0.75h | 0.25d |  | JFM | 1h | 0.25h |
| 227 | 2.2.1.3 | Research Propulsion & Power Options | 1h | 2025-04-28 08:00 A | 2025-04-28 09:00 | 225SS | 25% | 0.75h | 0.25d |  | JFM | 1h | 0.25h |
| 228 | 2.2.1.4 | Research Structure & Materials of Similar Products | 0.5h | 2025-04-28 08:00 A | 2025-04-28 08:30 | 225SS | 25% | 0.38h | 0.31d |  | JFM | 0.5h | 0.12h |
| 229 | 2.2.1.5 | Begin Initial Swarming Research | 0.5h | 2025-04-28 08:00 A | 2025-04-28 08:30 | 225SS | 25% | 0.38h | 0d |  | JFM | 0.5h | 0.12h |

| ID | WBS | Task | Duration | Start | Finish | Predecessors | Complete | Remaining | Total slack | Free slack | Resources | Work | Actual work |
| --- | --- | --- | --- | --- | --- | --- | --- | --- | --- | --- | --- | --- | --- |
| 230 | 2.2.2 | **Review Literature with Teammates** | 0.12d | 2025-04-28 08:30 | 2025-04-28 09:30 |  |  |  | 0d |  | IPD | 2h |  |
| 231 | 2.2.2.1 | Present Findings with Teammates | 0.5h | 2025-04-28 08:30 | 2025-04-28 09:00 | 229 |  |  | 0d |  | IPD | 0.5h |  |
| 232 | 2.2.2.2 | Combine & Refine Findings | 0.5h | 2025-04-28 09:00 | 2025-04-28 09:30 | 231 |  |  | 0d |  | IPD | 0.5h |  |
| 233 | 2.2.3 | **Draft Literature Study** | 0.19d | 2025-04-28 09:30 | 2025-04-28 11:00 |  |  |  | 0d |  | RV | 3h |  |
| 234 | 2.2.3.1 | Write Literature Study | 1h | 2025-04-28 09:30 | 2025-04-28 10:30 | 232 |  |  | 0d |  | RV | 1h |  |
| 235 | 2.2.3.2 | Review & Quality Control | 0.5h | 2025-04-28 10:30 | 2025-04-28 11:00 | 234 |  |  | 0d |  | RV | 0.5h |  |
| 236 | 2.3 | **Requirement Analysis** | 0.62d | 2025-04-28 11:00 A | 2025-04-28 17:00 | 223 | 76% | 0.15d | 2.75d | 0d | RV | 24.5h | 17.05h |
| 237 | 2.3.1 | **Review Stakeholder Requirements & Constraints** | 1h | 2025-04-28 11:00 A | 2025-04-28 12:00 |  | 99% | 0h |  |  | TK | 2.5h | 1.5h |
| 238 | 2.3.1.1 | Review User-/Top-Level Requirements and Constraints | 0.5h | 2025-04-28 11:00 A | 2025-04-28 11:30 A |  | 100% |  |  |  | TK | 0.5h | 0.5h |
| 239 | 2.3.1.2 | Identify Driving Requirements and Constraints | 0.5h | 2025-04-28 11:00 A | 2025-04-28 11:30 A | 238SS | 100% |  |  |  | TK | 0.5h | 0.5h |
| 240 | 2.3.1.3 | Assess Feasibility of Requirements and Constraints | 0.5h | 2025-04-28 11:30 A | 2025-04-28 12:00 A | 239 | 100% |  |  |  | TK | 0.5h | 0.5h |
| 241 | 2.3.2 | **Break Down Requirements** | 0.5d | 2025-04-28 13:00 A | 2025-04-28 17:00 | 237 | 88% | 0.06d | 2.75d | 0d | KS | 12h | 10.5h |
| 242 | 2.3.2.1 | Create Requirement Discovery Tree | 4h | 2025-04-28 13:00 A | 2025-04-28 17:00 |  | 75% | 1h | 2.75d |  | KS | 4h | 3h |
| 243 | 2.3.2.2 | Determine System Requirements | 2h | 2025-04-28 13:00 A | 2025-04-28 15:00 A | 242SS | 100% |  |  |  | KS | 2h | 2h |
| 244 | 2.3.2.3 | Determine Subsystem Requirements | 2h | 2025-04-28 15:00 A | 2025-04-28 17:00 A | 243 | 100% |  |  |  | KS | 2h | 2h |
| 245 | 2.3.3 | **Map System Functions** | 0.31d | 2025-04-28 13:00 A | 2025-04-28 15:30 | 241SS | 25% | 0.23d | 2.94d |  | DvdP | 5h | 1.25h |
| 246 | 2.3.3.1 | Create Functional Flow Diagram | 1.25h | 2025-04-28 13:00 A | 2025-04-28 14:15 |  | 25% | 0.94h | 0.04d | 0d | DvdP | 1.25h | 0.31h |
| 247 | 2.3.3.2 | Create Functional Breakdown Diagram | 1.25h | 2025-04-28 14:15 A | 2025-04-28 15:30 | 246 | 25% | 0.94h | 2.94d |  | DvdP | 1.25h | 0.31h |
| 248 | 2.4 | **Simulation Setup** | 4d | 2025-04-28 11:00 A | 2025-05-02 11:00 | 236SS | 8% | 3.67d | 16.62d |  | DvdP | 142h | 8.17h |
| 249 | 2.4.1 | Define Simulation Goals | 4h | 2025-04-28 11:00 A | 2025-04-28 16:00 A |  | 100% |  |  |  | DvdP | 4h | 4h |
| 250 | 2.4.2 | **Create Simulation Basis** | 0.38d | 2025-04-28 16:00 A | 2025-04-29 10:00 | 249 | 25% | 0.28d | 16.62d | 0d | KS | 6h | 1.5h |
| 251 | 2.4.2.1 | Select Simulation Tools | 1h | 2025-04-28 16:00 A | 2025-04-28 17:00 |  | 25% | 0.75h | 0.05d | 0d | KS | 1h | 0.25h |
| 252 | 2.4.2.2 | Set Up Simulation Environment | 1.5h | 2025-04-29 08:00 A | 2025-04-29 09:30 | 251 | 25% | 1.12h | 0.02d | 0d | KS | 1.5h | 0.38h |
| 253 | 2.4.2.3 | Document Assumptions | 0.5h | 2025-04-29 09:30 A | 2025-04-29 10:00 | 252 | 25% | 0.38h | 16.62d |  | KS | 0.5h | 0.12h |

| ID | WBS | Task | Duration | Start | Finish | Predecessors | Total slack | Free slack | Resources | Work |
| --- | --- | --- | --- | --- | --- | --- | --- | --- | --- | --- |
| 254 | 2.4.3 | **Develop Preliminary Aerodynamics Simulation** | 3.12d | 2025-04-29 10:00 | 2025-05-02 11:00 | 250 | 16.62d | 0d | TK | 50h |
| 255 | 2.4.3.1 | Build Simulation | 15h | 2025-04-29 10:00 | 2025-05-01 09:00 |  | 16.62d | 0d | TK | 15h |
| 256 | 2.4.3.2 | Run Baseline Tests | 5h | 2025-05-01 09:00 | 2025-05-01 15:00 | 255 | 16.62d | 0d | TK | 5h |
| 257 | 2.4.3.3 | Analyze Basic Results | 5h | 2025-05-01 15:00 | 2025-05-02 11:00 | 256 | 16.62d |  | TK | 5h |
| 258 | 2.4.4 | **Develop Preliminary Dynamics Simulation** | 3.12d | 2025-04-29 10:00 | 2025-05-02 11:00 | 254SS | 16.62d |  | IPD | 50h |
| 259 | 2.4.4.1 | Build Simulation | 15h | 2025-04-29 10:00 | 2025-05-01 09:00 |  | 16.62d | 0d | IPD | 15h |
| 260 | 2.4.4.2 | Run Baseline Tests | 5h | 2025-05-01 09:00 | 2025-05-01 15:00 | 259 | 16.62d | 0d | IPD | 5h |
| 261 | 2.4.4.3 | Analyze Basic Results | 5h | 2025-05-01 15:00 | 2025-05-02 11:00 | 260 | 16.62d |  | IPD | 5h |
| 262 | 2.5 | **Concept Generation** | 1.25d | 2025-04-29 08:00 | 2025-04-30 10:00 | 236 | 2.75d | 0d |  | 29.41h |
| 263 | 2.5.1 | **Brainstorm Subsystem Architecture Ideas** | 0.39d | 2025-04-29 08:00 | 2025-04-29 11:07 |  | 2.75d | 0d | MS | 15.65h |
| 264 | 2.5.1.1 | Control & Stability Subsystem | 3.13h | 2025-04-29 08:00 | 2025-04-29 11:07 |  | 2.75d | 0d | MS | 3.13h |
| 265 | 2.5.1.2 | Aerodynamics Subsystem | 3.13h | 2025-04-29 08:00 | 2025-04-29 11:07 | 264SS | 2.75d | 0d | MS | 3.13h |
| 266 | 2.5.1.3 | Power & Propulsion Subsystem | 3.13h | 2025-04-29 08:00 | 2025-04-29 11:07 | 265SS | 2.75d | 0d | MS | 3.13h |
| 267 | 2.5.1.4 | Structures & Materials Subsystem | 3.13h | 2025-04-29 08:00 | 2025-04-29 11:07 | 266SS | 2.75d |  | MS | 3.13h |
| 268 | 2.5.2 | **Define System Architecture Concepts** | 0.39d | 2025-04-29 11:07 | 2025-04-29 15:15 | 263 | 2.75d | 0d | RV | 6.26h |
| 269 | 2.5.2.1 | Integrate Subsystem Ideas | 1h | 2025-04-29 11:07 | 2025-04-29 13:07 |  | 2.75d | 0d | RV | 1h |
| 270 | 2.5.2.2 | Define and Sketch Systems | 1h | 2025-04-29 13:07 | 2025-04-29 14:07 | 269 | 2.75d | 0d | RV | 1h |
| 271 | 2.5.2.3 | Generate Concepts | 1.13h | 2025-04-29 14:07 | 2025-04-29 15:15 | 270 | 2.75d |  | RV | 1.13h |
| 272 | 2.5.3 | **Select Concepts** | 0.47d | 2025-04-29 15:15 | 2025-04-30 10:00 | 268 | 2.75d |  | TS | 7.5h |
| 273 | 2.5.3.1 | Generate Design Option Tree | 1h | 2025-04-29 15:15 | 2025-04-29 16:15 |  | 2.75d | 0d | TS | 1h |
| 274 | 2.5.3.2 | Assess Feasibility | 1h | 2025-04-29 16:15 | 2025-04-30 08:15 | 273 | 2.75d | 0d | TS | 1h |
| 275 | 2.5.3.3 | Select Initial Decision Criteria | 1h | 2025-04-30 08:15 | 2025-04-30 09:15 | 274 | 2.75d | 0d | TS | 1h |
| 276 | 2.5.3.4 | Select 3 Concepts | 0.75h | 2025-04-30 09:15 | 2025-04-30 10:00 | 275 | 2.75d |  | TS | 0.75h |
| 277 | 2.6 | **Review and Reporting** | 5.06d | 2025-04-30 10:00 | 2025-05-07 10:30 | 262 | 2.75d |  | JQ | 93.98h |
| 278 | 2.6.1 | **Draft Executive Overview** | 0.5d | 2025-04-30 10:00 | 2025-04-30 15:00 |  | 18.25d | 0d | JQ | 8h |
| 279 | 2.6.1.1 | Write Executive Overview | 3h | 2025-04-30 10:00 | 2025-04-30 14:00 |  | 18.25d | 0d | JQ | 3h |
| 280 | 2.6.1.2 | Review and Quality Control | 1h | 2025-04-30 14:00 | 2025-04-30 15:00 | 279 | 18.25d |  | JQ | 1h |

| ID | WBS | Task | Type | Duration | Start | Finish | Predecessors | Total slack | Free slack | Constraint | Deadline | Resources | Work |
| --- | --- | --- | --- | --- | --- | --- | --- | --- | --- | --- | --- | --- | --- |
| 281 | 2.6.2 | **Draft Baseline Report** |  | 2.75d | 2025-04-30 10:00 | 2025-05-02 17:15 | 278SS | 2.75d |  |  |  | RV | 31.99h |
| 282 | 2.6.2.1 | Write Baseline Report |  | 8h | 2025-04-30 10:00 | 2025-05-01 10:00 |  | 17.5d | 0d |  |  | RV | 8h |
| 283 | 2.6.2.2 | Review and Quality Control |  | 2h | 2025-05-01 10:00 | 2025-05-01 13:00 | 282 | 17.5d |  |  |  | RV | 2h |
| 284 | 6.6.2.3 | Baseline Report Draft | milestone | 0h | 2025-05-02 17:15 | 2025-05-02 17:15 |  | 0d |  | finish no earlier than 2025-05-02 17:15 | 2025-05-02 17:15 | RV |  |
| 285 | 2.6.3 | Organize Baseline Review |  | 7.5h | 2025-05-05 08:00 | 2025-05-05 16:30 | 284 | 15.06d |  |  |  | DP | 7.5h |
| 286 | 2.6.4 | **Perform Peer Review** |  | 0.25d | 2025-05-05 08:00 | 2025-05-05 10:00 | 284 | 15.75d |  |  |  | ALL | 4h |
| 287 | 2.6.4.1 | Review other Groups |  | 1h | 2025-05-05 08:00 | 2025-05-05 09:00 |  | 15.75d | 0d |  |  | ALL | 1h |
| 288 | 2.6.4.2 | Implement Own Feedback |  | 1h | 2025-05-05 09:00 | 2025-05-05 10:00 | 287 | 15.75d |  |  |  | ALL | 1h |
| 289 | 0 | Baseline Review | milestone | 2h | 2025-05-07 08:30 | 2025-05-07 10:30 |  | 0.69d |  | start no earlier than 2025-05-07 08:30 | 2025-05-07 17:15 | ALL | 2h |
| 290 | 7 | Final Review | milestone, manual | 0h | 2025-06-23 08:30 | 2025-06-23 08:30 |  |  |  |  |  |  |  |
| 291 | 8 | Final Presentation | milestone, manual | 0h | 2025-06-27 08:00 | 2025-06-27 08:00 |  |  |  |  |  |  |  |
